# 沃赛-工作计划_测试组

Schedule from MS Project, 2016-12-26 to 2017-05-17.
Microsoft

## Calendars

- 标准: Mon-Fri 08:00-12:00, 13:00-17:00; Sat-Sun off.

## Resources

| Resource |
| --- |
| 正一 |
| 刘祥 |
| 海燕 |
| 裘茂意 |
| 潘雪 |
| 郭威 |
| 谢进帅 |
| 裘荣旺 |
| 蒋才达 |
| ALL |
| 郭敬文 |
| 金方明 |
| 王翼奎 |
| 李波 |
| 小花 |
| 刘海燕 |
| 陈政昌 |
| 段再武 |
| 邹学文 |
| 测试 |
| 晓余 |
| 学文 |
| 再武 |
| 刘俊杰 |
| 孙颖芳 |
| 王文平 |
| 茂意 |
| 开发 |
| 小川 |
| 研发 |
| 俊杰 |

## Schedule

| ID | WBS | Task | Duration | Start | Finish | Predecessors | Total slack | Free slack | Constraint | Resources | Work |
| --- | --- | --- | --- | --- | --- | --- | --- | --- | --- | --- | --- |
| 2 | 1 | **产品** | 47d | 2016-12-26 | 2017-02-28 |  | 56d |  |  |  | 504h |
| 3 | 1.1 | **当前开发版本** | 5d | 2017-01-30 | 2017-02-04 |  | 70d |  |  |  | 48h |
| 4 | 1.1.1 | 开发版本的需求验收 & 当前版本需求完善 | 3d | 2017-01-30 | 2017-02-01 | 12 | 70d | 0d | start no earlier than 2017-01-30 | 小川 | 24h |
| 5 | 1.1.2 | 开发版本的版本验收 & 众测 | 2d | 2017-02-02 | 2017-02-03 | 4 | 70d | 0d | start no earlier than 2017-01-19 | 小川 | 16h |
| 6 | 1.1.3 | 开发版本的上线报告(邮件) + 上线(雷丹) | 1d | 2017-02-04 | 2017-02-04 | 5 | 70d | 0d | start no earlier than 2017-01-19 | 小川 | 8h |
| 7 | 1.2 | **次版本（弹性区间：取决于需求包量级）** | 33d | 2016-12-26 | 2017-02-08 |  | 70d |  |  |  | 408h |
| 8 | 1.2.1 | 次版本需求收集:产品,运营,销售,研发 | 18d | 2016-12-26 | 2017-01-14 |  | 88d |  | finish no earlier than 2017-01-14 | 小川 | 144h |
| 9 | 1.2.2 | 需求库提取三周版本需求包 & 需求计划(会议) | 2d | 2017-01-16 | 2017-01-17 |  | 70d | 0d | start no earlier than 2017-01-16 | 小川 | 16h |
| 10 | 1.2.3 | 需求描述文档编写,美术支持[物理app] | 5d | 2017-01-18 | 2017-01-23 | 9 | 70d | 0d | start no earlier than 2017-01-17 | 小川 | 40h |
| 11 | 1.2.4 | 需求描述文档编写,美术支持[科学app] | 3d | 2017-01-24 | 2017-01-26 | 10 | 70d | 0d | start no earlier than 2017-01-19 | 小川 | 24h |
| 12 | 1.2.5 | 需求描述文档编写,美术支持[web] | 2d | 2017-01-27 | 2017-01-28 | 11 | 70d | 0d | start no earlier than 2017-01-19 | 小川 | 16h |
| 13 | 1.2.6 | 次开发版本需求收集:产品,运营,销售,研发 | 18d | 2017-01-16 | 2017-02-04 |  | 73d |  | start no earlier than 2017-01-16 | 小川 | 144h |
| 14 | 1.2.7 | 需求下发，讲解，答疑(会议) | 3d | 2017-02-06 | 2017-02-08 | 6 | 70d |  | start no earlier than 2017-02-02 | 小川 | 24h |
| 15 | 1.3 | **次开发版本（同上：当前开发版本）** | 5d | 2017-02-22 | 2017-02-28 |  | 56d |  |  |  | 48h |
| 16 | 1.3.1 | 次开发版本的需求验收 & 当前版本需求完善 | 3d | 2017-02-22 | 2017-02-24 | 31 | 58d |  | start no earlier than 2017-01-19 | 小川 | 24h |
| 17 | 1.3.2 | 次开发版本的版本验收 & 众测 | 2d | 2017-02-25 | 2017-02-27 | 32 | 55d | 0d | start no earlier than 2017-01-19 | 小川 | 16h |
| 18 | 1.3.3 | 次开发版本的上线报告(邮件) + 上线(雷丹) | 1d | 2017-02-28 | 2017-02-28 | 17 | 56d |  | start no earlier than 2017-01-19 | 小川 | 8h |
| 20 | 2 | **研发** | 16d | 2017-02-06 | 2017-02-27 |  | 57d |  |  |  | 184h |
| 21 | 2.1 | 需求接收，澄清，程序设计文档 | 3d | 2017-02-06 | 2017-02-08 |  | 57d | 0d | start no earlier than 2017-02-06 | 研发 | 24h |
| 22 | 2.2 | 功能分解,量化,开发计划公布(邮件) | 3d | 2017-02-06 | 2017-02-08 |  | 70d |  | start no earlier than 2017-02-06 | 学文 | 24h |
| 23 | 2.3 | 按计划执行开发 | 9d | 2017-02-09 | 2017-02-18 | 21 | 57d | 0d | start no earlier than 2017-01-19 | 研发 | 72h |
| 24 | 2.4 | 版本转测验证 & 转测(邮件) | 2d | 2017-02-20 | 2017-02-21 | 23 | 57d | 0d | start no earlier than 2017-01-19 | 学文 | 16h |
| 25 | 2.5 | 集成测试第一轮，问题修复 | 3d | 2017-02-22 | 2017-02-24 | 24 | 56d | 0d | start no earlier than 2017-02-20 | 研发 | 24h |
| 26 | 2.6 | 版本遗留问题评审会(会议) | 1d | 2017-02-25 | 2017-02-25 |  | 57d |  | start no earlier than 2017-02-25 | 刘祥 | 8h |
| 27 | 2.7 | 集成测试第二轮，问题修复 | 2d | 2017-02-25 | 2017-02-27 | 25 | 56d |  | start no earlier than 2017-01-19 | 研发 | 16h |

| ID | WBS | Task | Duration | Start | Finish | Predecessors | Total slack | Free slack | Constraint | Resources | Work | 项目名称 |
| --- | --- | --- | --- | --- | --- | --- | --- | --- | --- | --- | --- | --- |
| 29 | 3 | **测试(兼运维)** | 16d | 2017-02-06 | 2017-02-27 |  | 56d |  |  |  | 152h |  |
| 30 | 3.1 | 需求接收，澄清，用例设计文档 | 5d | 2017-02-06 | 2017-02-10 |  | 55d | 0d | start no earlier than 2017-02-06 | 俊杰 | 40h |  |
| 31 | 3.2 | 功能转测 | 9d | 2017-02-11 | 2017-02-21 | 30 | 55d | 0d | start no earlier than 2017-02-08 | 俊杰 | 72h |  |
| 32 | 3.3 | 集成测试，第一轮：用例+发散+兼容性(邮件) | 3d | 2017-02-22 | 2017-02-24 | 31 | 55d | 0d | start no earlier than 2017-01-19 | 俊杰 | 24h |  |
| 33 | 3.4 | 集成测试，第二轮：回归+保障(邮件) | 2d | 2017-02-25 | 2017-02-27 | 32 | 56d |  | start no earlier than 2017-01-19 | 俊杰 | 16h |  |
| 35 | 4 | **软件过程思想** | 1d? | 2017-01-19 | 2017-01-19 |  | 84d |  |  |  |  |  |
| 36 | 4.1 | 明确团队间交付要求(文档) | 1d? | 2017-01-19 | 2017-01-19 |  | 84d |  | start no earlier than 2017-01-19 |  |  |  |
| 37 | 4.2 | 工作量化（工作量评估&计划） | 1d? | 2017-01-19 | 2017-01-19 |  | 84d |  | start no earlier than 2017-01-19 |  |  |  |
| 38 | 4.3 | 清晰关键点扭转（会议&邮件） | 1d? | 2017-01-19 | 2017-01-19 |  | 84d |  | start no earlier than 2017-01-19 |  |  |  |
| 39 | 4.4 | **缺点：** | 1d? | 2017-01-19 | 2017-01-19 |  | 84d |  |  |  |  |  |
| 40 | 4.4.1 | 整体版本跨度为6周,最新的想法不方便直接开发，产品缺少灵活性 | 1d? | 2017-01-19 | 2017-01-19 |  | 84d |  | start no earlier than 2017-01-19 |  |  |  |
| 41 | 4.4.2 | 需求计划(会议),从提出到开发启动间隔3周，不方便接受较大的需求变更 | 1d? | 2017-01-19 | 2017-01-19 |  | 84d |  | start no earlier than 2017-01-19 |  |  |  |
| 42 | 4.5 | **风险** | 1d? | 2017-01-19 | 2017-01-19 |  | 84d |  |  |  |  |  |
| 43 | 4.5.1 | 过程中增加首发的分支版本管理，会产品策划，开发及测试的原工作计划 | 1d? | 2017-01-19 | 2017-01-19 |  | 84d |  | start no earlier than 2017-01-19 |  |  |  |
| 45 | 5 | 假定客户:老板/项目团队关键人 | 1d? | 2017-05-17 | 2017-05-17 |  | 0d |  | start no earlier than 2017-05-17 |  |  |  |
| 46 | 6 | 需求整理,解决问题,业务梳理,交互确认,会议组织,业务答疑,版本验收,线上运维 | 1d? | 2017-05-17 | 2017-05-17 |  | 0d |  | start no earlier than 2017-05-17 |  |  | 产品 |
| 47 | 7 | 获取需求,分析,技术验证,需求建模,数据库建模,技术设计文档,开发过程中维护接口文档,每日构建,自验证交付,转测,修复,上线支持 | 1d? | 2017-05-17 | 2017-05-17 |  | 0d |  | start no earlier than 2017-05-17 |  |  | 开发 |
| 48 | 8 | 获取需求,测试方案,用例(测试方法),评审,每日构建(自动化/邮件驱动),配置管理,环境维护,集成测试,回归问题,测试报告,组织验收,上线执行 | 1d? | 2017-05-17 | 2017-05-17 |  | 0d |  | start no earlier than 2017-05-17 |  |  | 测试 |
| 49 | 9 | 组织过程,计划编制(可迭代),评估工时,工期,确认范围,关注关键路径,评审,敏捷思想(晨会,沟通,测试驱动),进度控制(关键路径),风险控制,质量控制,回溯总结 | 1d? | 2017-05-17 | 2017-05-17 |  | 0d |  | start no earlier than 2017-05-17 |  |  | pl |
| 50 | 10 | 获取需求,分析架构需求,架构组合,评审,技术实现,培训讲解(3维度-演化 要素 模式,使用),作用(实现约束,质量制约,推理直观,演化适应,复用) | 1d? | 2017-05-17 | 2017-05-17 |  | 0d |  | start no earlier than 2017-05-17 |  |  | 架构师 |
